# Test

Schedule from MS Project, 2023-02-21 to 2023-07-19, status date 2023-03-06, costs in ₽, A marks actual dates.

## Calendars

- Стандартный: Mon-Fri 09:00-13:00, 14:00-18:00; Sat-Sun off. Exceptions (off unless hours are given): 2023-03-07 09:00-13:00, 14:00-17:00 (Сокр. День), 2023-03-08 (8 Марта), 2023-04-24 09:00-13:00, 14:00-17:00 (Сокр. День), 2023-04-25 (Радуница), 2023-05-01 (Праздник труда), 2023-05-08 09:00-13:00, 14:00-17:00 (Сокр. День), 2023-05-09 (День Победы), 2023-07-03 (День Независимости РБ).

## Resources

| Resource | Unit | Rate | Cost per use |
| --- | --- | --- | --- |
| Руководитель проетка |  | 15 | 850 |
| Веб-архитектор |  | 15 | 800 |
| Фронтненд-разработчик |  | 14 |  |
| Бэкенд-разработчик |  | 14 |  |
| Дизайнер |  | 12 |  |
| Бизнес-аналитик |  | 10 |  |
| Тест-инженер |  | 13 |  |
| Контетн-менеджер |  | 8 |  |
| Картридж для принтера | шт | 50 |  |
| Бумага | шт | 14 |  |
| Покупка лицензии на ПО | шт | 120 |  |
| Услуги связи |  |  |  |
| Интернет |  |  |  |

## Schedule

| ID | WBS | Task | Type | Duration | Start | Finish | Predecessors | Complete | Remaining | Baseline start | Baseline finish | Baseline duration | Total slack | Free slack | Constraint | Resources | Work | Actual work | Cost | Baseline cost | Actual cost |
| --- | --- | --- | --- | --- | --- | --- | --- | --- | --- | --- | --- | --- | --- | --- | --- | --- | --- | --- | --- | --- | --- |
| 1 | 1 | Начало проекта | milestone, manual | 0d | 2023-02-21 | 2023-02-21 |  |  |  | 2023-02-21 | 2023-02-21 | 0d |  |  |  |  |  |  |  |  |  |
| 2 | 2 | **Анализ требований** |  | 17d | 2023-02-21 | 2023-03-17 |  |  |  | 2023-02-21 | 2023-03-17 | 17d | 2d |  |  |  | 295h |  | 10,499.5 | 10,499.5 |  |
| 3 | 2.1 | Встреча с заказчиком |  | 1.67d | 2023-02-21 | 2023-02-22 | 1 |  |  | 2023-02-21 | 2023-02-22 | 1.67d | 76.67d | 0.33d |  | Веб-архитектор; Дизайнер; Руководитель проетка; Бизнес-аналитик | 32h |  | 2,066 | 2,066 |  |
| 4 | 2.2 | Сбор информации | manual | 6d | 2023-02-23 | 2023-03-02 | 3 |  |  | 2023-02-23 | 2023-03-02 | 6d |  |  | start no earlier than 2023-02-23 | Дизайнер; Интернет [0.1%]; Руководитель проетка; Бизнес-аналитик | 144h |  | 2,646 | 2,646 |  |
| 5 | 2.3 | Написание документа требований | manual | 2d | 2023-03-03 | 2023-03-06 | 3 |  |  | 2023-03-03 | 2023-03-06 | 2d |  |  |  | Руководитель проетка; Бизнес-аналитик | 32h |  | 1,250 | 1,250 |  |
| 6 | 2.4 | Обсуждение требований с заказчиком |  | 1.67d | 2023-03-10 | 2023-03-13 | 5FS+2d |  |  | 2023-03-10 | 2023-03-13 | 1.67d | 70.33d | 0d |  | Веб-архитектор; Дизайнер; Руководитель проетка; Услуги связи [0.1%]; Бизнес-аналитик | 32h |  | 2,066 | 2,066 |  |
| 7 | 2.5 | Корректировка требований | manual | 1.88d | 2023-03-13 | 2023-03-14 | 6 |  |  | 2023-03-13 | 2023-03-14 | 1.88d |  |  |  | Руководитель проетка [50%]; Бизнес-аналитик [50%] | 15h |  | 612.5 | 612.5 |  |
| 8 | 2.6 | Подготовка договора и устава | manual | 2d | 2023-03-13 | 2023-03-15 | 6 |  |  | 2023-03-13 | 2023-03-15 | 2d |  |  |  | Картридж для принтера [1 шт]; Руководитель проетка [50%]; Бумага [1 шт] | 8h |  | 609 | 609 |  |
| 9 | 2.7 | Согласование документов с заказчиком | manual | 2d | 2023-03-15 | 2023-03-17 | 7, 8 |  |  | 2023-03-15 | 2023-03-17 | 2d |  |  |  | Руководитель проетка; Бизнес-аналитик | 32h |  | 1,250 | 1,250 |  |
| 10 | 2.8 | Завершение анализа требований | milestone, manual | 0d | 2023-03-17 | 2023-03-17 | 9 |  |  | 2023-03-17 | 2023-03-17 | 0d |  |  |  |  |  |  |  |  |  |
| 11 | 3 | **Разработка ТЗ** |  | 13d | 2023-03-17 | 2023-04-05 |  |  |  | 2023-03-17 | 2023-04-05 | 13d | 0d |  |  |  | 172h |  | 5,689 | 5,689 |  |
| 12 | 3.1 | Определение структуры WEB-прилоежения | manual | 7d | 2023-03-17 | 2023-03-28 | 10 |  |  | 2023-03-17 | 2023-03-28 | 7d |  |  |  | Веб-архитектор | 56h |  | 1,640 | 1,640 |  |
| 13 | 3.2 | Выбор технологий | milestone | 0d | 2023-03-17 | 2023-03-17 | 10 |  |  | 2023-03-17 | 2023-03-17 | 0d | 78d | 7d |  | Веб-архитектор [50%] | 4h |  | 480 | 480 |  |
| 14 | 3.3 | Разработка ТЗ | manual | 4d | 2023-03-28 | 2023-04-03 | 13, 12 |  |  | 2023-03-28 | 2023-04-03 | 4d |  |  |  | Бумага [1 шт]; Веб-архитектор; Руководитель проетка; Бизнес-аналитик | 96h |  | 2,944 | 2,944 |  |
| 15 | 3.4 | Согласование ТЗ с заказчиком | manual | 2d | 2023-04-03 | 2023-04-05 | 14 |  |  | 2023-04-03 | 2023-04-05 | 2d |  |  |  | Руководитель проетка [50%]; Бизнес-аналитик [50%] | 16h |  | 625 | 625 |  |
| 16 | 3.5 | Заврешение разработки ТЗ | milestone, manual | 0d | 2023-04-05 | 2023-04-05 | 15 |  |  | 2023-04-05 | 2023-04-05 | 0d |  |  |  |  |  |  |  |  |  |
| 17 | 4 | **Создание протатипа** |  | 6d | 2023-04-05 A | 2023-04-13 |  | 70% | 1.8d | 2023-04-05 | 2023-04-13 | 6d | 0d |  |  |  | 44.8h | 33.28h | 2,132 | 2,132 | 1,959.2 |
| 18 | 4.1 | Создание протатипа | manual | 4d | 2023-04-05 A | 2023-04-11 A | 16 | 100% |  | 2023-04-05 | 2023-04-11 | 4d |  |  |  | Веб-архитектор | 32h | 32h | 1,280 | 1,280 | 1,280 |
| 19 | 4.2 | Согласование с заказчиком | manual | 2d | 2023-04-11 A | 2023-04-13 | 18 | 10% | 1.8d | 2023-04-11 | 2023-04-13 | 2d |  |  |  | Руководитель проетка [40%]; Веб-архитектор [40%] | 12.8h | 1.28h | 852 | 852 | 679.2 |
| 20 | 4.3 | Создание протатипа завершено | milestone, manual | 0d | 2023-04-13 | 2023-04-13 | 19 |  |  | 2023-04-13 | 2023-04-13 | 0d |  |  |  | Дизайнер |  |  |  |  |  |
| 21 | 5 | **Разработка дизайна WEB-приложения** |  | 18d | 2023-04-13 A | 2023-05-12 |  | 68% | 5.75d | 2023-04-13 | 2023-05-12 | 18d | 0d |  |  |  | 172.8h | 100h | 3,281.8 | 3,281.8 | 2,056 |
| 22 | 5.1 | Разработка макетов старниц | manual | 12d | 2023-04-13 A | 2023-05-03 A | 20 | 100% |  | 2023-04-13 | 2023-05-03 | 12d |  |  |  | Дизайнер | 96h | 96h | 1,152 | 1,152 | 1,152 |
| 23 | 5.2 | Согласование макетов с заказчиком | manual | 4d | 2023-05-03 A | 2023-05-10 | 22 | 6% | 3.75d | 2023-05-03 | 2023-05-10 | 4d |  |  |  | Руководитель проетка; Дизайнер | 64h | 4h | 1,714 | 1,714 | 904 |
| 24 | 5.3 | Доработка макетов | manual | 1d | 2023-05-10 | 2023-05-11 | 23 |  |  | 2023-05-10 | 2023-05-11 | 1d |  |  |  | Дизайнер | 8h |  | 96 | 96 |  |
| 25 | 5.4 | Утверждение окончательного варианта | manual | 1d | 2023-05-11 | 2023-05-12 | 24 |  |  | 2023-05-11 | 2023-05-12 | 1d |  |  |  | Дизайнер [30%]; Руководитель проетка [30%] | 4.8h |  | 319.8 | 319.8 |  |
| 26 | 5.5 | Заврешение разработки дизайна | milestone, manual | 0d | 2023-05-12 | 2023-05-12 | 25 |  |  | 2023-05-12 | 2023-05-12 | 0d |  |  |  |  |  |  |  |  |  |

| ID | WBS | Task | Type | Duration | Start | Finish | Predecessors | Complete | Remaining | Baseline start | Baseline finish | Baseline duration | Total slack | Resources | Work | Actual work | Cost | Baseline cost | Actual cost |
| --- | --- | --- | --- | --- | --- | --- | --- | --- | --- | --- | --- | --- | --- | --- | --- | --- | --- | --- | --- |
| 27 | 6 | **Верстка и программирование** |  | 29d | 2023-05-12 A | 2023-06-22 |  | 48% | 14.99d | 2023-05-12 | 2023-06-22 | 29d | 0d |  | 371.2h | 170h | 4,988.8 | 4,988.8 | 2,380 |
| 28 | 6.1 | Разработка клиентской части приложения | manual | 16d | 2023-05-12 A | 2023-06-05 | 26 | 66% | 5.38d | 2023-05-12 | 2023-06-05 | 16d |  | Фронтненд-разработчик | 128h | 85h | 1,792 | 1,792 | 1,190 |
| 29 | 6.2 | Разработка серверной части приложения | manual | 15d | 2023-05-12 A | 2023-06-02 | 26 | 71% | 4.38d | 2023-05-12 | 2023-06-02 | 15d |  | Бэкенд-разработчик | 120h | 85h | 1,680 | 1,680 | 1,190 |
| 30 | 6.3 | Подготовка контента и заполнение страниц | manual | 4d | 2023-06-05 | 2023-06-09 | 28 |  |  | 2023-06-05 | 2023-06-09 | 4d |  | Контетн-менеджер | 32h |  | 256 | 256 |  |
| 31 | 6.4 | Тестирование | manual | 2d | 2023-06-09 | 2023-06-13 | 29, 30 |  |  | 2023-06-09 | 2023-06-13 | 2d |  | Тест-инженер | 16h |  | 208 | 208 |  |
| 32 | 6.5 | Правка кода, устранение сбоев в работе | manual | 4d | 2023-06-13 | 2023-06-19 | 31 |  |  | 2023-06-13 | 2023-06-19 | 4d |  | Фронтненд-разработчик [80%]; Бэкенд-разработчик [80%] | 51.2h |  | 716.8 | 716.8 |  |
| 33 | 6.6 | Интеграция с внешними системами и сервисами | manual | 3d | 2023-06-19 | 2023-06-22 | 32 |  |  | 2023-06-19 | 2023-06-22 | 3d |  | Интернет [0.1%]; Бэкенд-разработчик | 24h |  | 336 | 336 |  |
| 34 | 6.7 | Завершение верстки и программирования | milestone, manual | 0d | 2023-06-22 | 2023-06-22 | 33 |  |  | 2023-06-22 | 2023-06-22 | 0d |  |  |  |  |  |  |  |
| 35 | 7 | **Тестирование и отладвка WEB-прилоежения** |  | 13d | 2023-06-22 A | 2023-07-12 |  | 89% | 1.42d | 2023-06-22 | 2023-07-12 | 13d | 0d |  | 140h | 118h | 2,118 | 2,042 | 1,810 |
| 36 | 7.1 | Техническое тестирование | manual | 1.62d | 2023-06-22 A | 2023-06-23 A | 34 | 100% |  | 2023-06-22 | 2023-06-26 | 2d |  | Тест-инженер | 20h | 20h | 260 | 208 | 260 |
| 37 | 7.2 | Тестирование на стророне заказчика | manual | 4d | 2023-06-26 A | 2023-06-30 A | 36 | 100% |  | 2023-06-26 | 2023-06-30 | 4d |  | Руководитель проетка [20%] | 8h | 8h | 290 | 266 | 290 |
| 38 | 7.3 | Отладка | manual | 7d | 2023-06-30 A | 2023-07-12 | 37 | 80% | 1.38d | 2023-06-30 | 2023-07-12 | 7d |  | Фронтненд-разработчик; Бэкенд-разработчик | 112h | 90h | 1,568 | 1,568 | 1,260 |
| 39 | 7.4 | Завершение тестирования и отладки | milestone, manual | 0d | 2023-07-12 | 2023-07-12 | 38 |  |  | 2023-07-12 | 2023-07-12 | 0d |  |  |  |  |  |  |  |
| 40 | 8 | **Внедрение** |  | 5d | 2023-07-12 | 2023-07-19 |  |  |  | 2023-07-12 | 2023-07-19 | 5d | 0d |  | 80h |  | 2,313 | 2,313 |  |
| 41 | 8.1 | Перенос на рабочий сервер | manual | 2d | 2023-07-12 | 2023-07-14 | 39 |  |  | 2023-07-12 | 2023-07-14 | 2d |  | Бэкенд-разработчик | 16h |  | 224 | 224 |  |
| 42 | 8.2 | Формирование отчетности | manual | 3d | 2023-07-12 | 2023-07-17 | 39 |  |  | 2023-07-12 | 2023-07-17 | 3d |  | Бумага [1 шт]; Руководитель проетка; Бизнес-аналитик | 48h |  | 1,464 | 1,464 |  |
| 43 | 8.3 | Передача WEB-приложения заказчику | manual | 2d | 2023-07-17 | 2023-07-19 | 41, 42 |  |  | 2023-07-17 | 2023-07-19 | 2d |  | Руководитель проетка [50%]; Бизнес-аналитик [50%] | 16h |  | 625 | 625 |  |
| 44 | 8.4 | Внедрение завершено | milestone, manual | 0d | 2023-07-19 | 2023-07-19 | 43 |  |  | 2023-07-19 | 2023-07-19 | 0d |  |  |  |  |  |  |  |
| 45 | 8.5 | Проект завершен | milestone, manual | 0d | 2023-07-19 | 2023-07-19 | 44 |  |  | 2023-07-19 | 2023-07-19 | 0d |  |  |  |  |  |  |  |
